# Fluxo - Sistema Bancario Digital

How a schedule from MS Project XML changed from version to version. A marks actual dates.

## Version 1 (data date 2026-08-24, saved 2026-09-11)

Note of the change: Correções realizadas Baseado na primeira apresentação feita.

| ID | WBS | Task | Duration | Start | Finish | Predecessors | Complete | Constraint |
| --- | --- | --- | --- | --- | --- | --- | --- | --- |
| 1 | 1 | **FLUXO - Sistema Bancario Digital** | 481.5d | 2026-02-23 | 2026-12-03 |  | 65% |  |
| 2 | 1.1 | **FASE 0 - Fundamentacao e Concepcao** | 180d | 2026-02-23 | 2026-08-07 |  | 100% |  |
| 3 |  | Aula 01 - Conteudo programatico da disciplina | 2d | 2026-02-23 | 2026-02-24 |  | 100% | start no earlier than 2026-02-23 |
| 4 |  | Formacao do grupo de trabalho | 3d | 2026-02-25 | 2026-02-27 | 3 | 100% | start no earlier than 2026-02-25 |
| 5 |  | Aula 02 - Tecnicas de modelagem de sistemas OO | 3d | 2026-03-02 | 2026-03-04 | 4FS+3d | 100% | start no earlier than 2026-03-02 |
| 6 |  | Brainstorming e selecao do tema do projeto | 6d | 2026-03-05 | 2026-03-09 | 5 | 100% | start no earlier than 2026-03-05 |
| 7 |  | Pesquisa de mercado - bancos digitais (benchmark) | 7d | 2026-03-10 | 2026-03-15 | 6 | 100% | start no earlier than 2026-03-10 |
| 8 |  | Definicao do tema: banco digital Fluxo | 2d | 2026-03-16 | 2026-03-17 | 7 | 100% | start no earlier than 2026-03-16 |
| 9 |  | Estudo de arquitetura de software em camadas | 9d | 2026-03-18 | 2026-03-25 | 8 | 100% | start no earlier than 2026-03-18 |
| 10 |  | Estudo dirigido - Laravel e PHP 8 | 23d | 2026-03-26 | 2026-04-14 | 9 | 100% | start no earlier than 2026-03-26 |
| 11 |  | Estudo dirigido - Flutter e Dart | 23d | 2026-04-15 | 2026-05-04 | 9FS+23d | 100% | start no earlier than 2026-04-15 |
| 12 |  | Estudo dirigido - PostgreSQL e modelagem relacional | 17d | 2026-05-05 | 2026-05-19 | 10FS+23d | 100% | start no earlier than 2026-05-05 |
| 13 |  | Estudo dirigido - Tailwind CSS e Blade | 14d | 2026-05-20 | 2026-05-31 | 10FS+40d | 100% | start no earlier than 2026-05-20 |
| 14 |  | Avaliacao institucional N1 | 11d | 2026-04-07 | 2026-04-16 |  | 100% | start no earlier than 2026-04-07 |
| 15 |  | Avaliacao institucional N2 | 8d | 2026-06-17 | 2026-06-23 |  | 100% | start no earlier than 2026-06-17 |
| 16 |  | Prova de conceito - integracao Laravel + Flutter | 14d | 2026-06-24 | 2026-07-05 | 15 | 100% | start no earlier than 2026-06-24 |
| 17 |  | Definicao da stack tecnologica definitiva | 4d | 2026-07-06 | 2026-07-09 | 16 | 100% | start no earlier than 2026-07-06 |
| 18 |  | Estudo de viabilidade de hospedagem (Render) | 6d | 2026-07-10 | 2026-07-14 | 17 | 100% | start no earlier than 2026-07-10 |
| 19 |  | Recesso academico | 23d | 2026-07-15 | 2026-08-03 | 18 | 100% | start no earlier than 2026-07-15 |
| 20 |  | Retomada - alinhamento do grupo e divisao de papeis | 3d | 2026-08-04 | 2026-08-06 | 19 | 100% | start no earlier than 2026-08-04 |
| 21 |  | Criacao do repositorio no GitHub | 1d | 2026-08-07 | 2026-08-07 | 20 | 100% | start no earlier than 2026-08-07 |
| 22 |  | Concessao de acesso ao professor no repositorio | 1d | 2026-08-07 | 2026-08-07 | 21SS | 100% | start no earlier than 2026-08-07 |
| 23 | 1.2 | **CHECKPOINT 1 - Escopo, Requisitos e Casos de Uso** | 48d | 2026-08-18 | 2026-09-03 |  | 35% |  |
| 24 |  | 4.1 Definicao do escopo do projeto | 5.5d | 2026-08-18 | 2026-08-22 | 22FS+12d | 100% | start no earlier than 2026-08-18 |
| 25 |  | Identificacao e analise de stakeholders | 3.5d | 2026-08-20 | 2026-08-22 | 24SS+2d | 100% | start no earlier than 2026-08-20 |
| 26 |  | 4.2 Levantamento de requisitos funcionais | 6d | 2026-08-21 | 2026-08-25 | 24SS+3d | 60% | start no earlier than 2026-08-21 |
| 27 |  | 4.2 Levantamento de requisitos nao funcionais | 4.5d | 2026-08-23 | 2026-08-26 | 26SS+2.5d | 25% | start no earlier than 2026-08-23 |
| 28 |  | Definicao das regras de negocio | 3d | 2026-08-25 | 2026-08-27 | 27SS+2.5d |  | start no earlier than 2026-08-25 |
| 29 |  | 4.3 Diagrama de casos de uso 1 - Acesso e conta | 2d | 2026-08-26 | 2026-08-27 | 27SS+3.5d |  | start no earlier than 2026-08-26 |
| 30 |  | 4.3 Diagrama de casos de uso 3 - Movimentacoes | 2d | 2026-08-27 | 2026-08-28 | 29SS+1d |  | start no earlier than 2026-08-27 |
| 31 |  | 4.3 Diagrama de casos de uso 4 - Cartoes | 2.5d | 2026-08-28 | 2026-08-29 | 30SS+1d |  | start no earlier than 2026-08-28 |
| 32 |  | 4.3 Diagrama de casos de uso 5 - Pagamentos | 3d | 2026-08-29 | 2026-08-30 | 31SS+1d |  | start no earlier than 2026-08-29 |
| 33 |  | 4.3 Diagrama de casos de uso 7 - Administracao | 2.5d | 2026-08-30 | 2026-08-31 | 32SS+1.5d |  | start no earlier than 2026-08-30 |
| 34 |  | Modelo de dados preliminar - 16 entidades | 4d | 2026-08-29 | 2026-08-31 | 28FS+1d |  | start no earlier than 2026-08-29 |
| 35 |  | Definicao da estrutura monorepo (backend/mobile) | 2.5d | 2026-08-23 | 2026-08-24 | 22FS+17.5d | 50% | start no earlier than 2026-08-23 |
| 36 |  | Configuracao do .gitignore do monorepo | 1d | 2026-08-24 | 2026-08-24 | 35SS+1.5d |  | start no earlier than 2026-08-24 |
| 37 |  | 4.4 Quadro de gestao das atividades | 2d | 2026-08-31 | 2026-09-01 | 33SS+1.5d |  | start no earlier than 2026-08-31 |
| 38 |  | 4.4.2 Criacao do projeto no LibreProject | 2d | 2026-09-01 | 2026-09-02 | 37SS+1d |  | start no earlier than 2026-09-01 |
| 39 |  | Consolidacao do PDF unico do checkpoint 1 | 1d | 2026-09-02 | 2026-09-02 | 38SS+1d |  | start no earlier than 2026-09-02 |
| 40 |  | Entrega pelo diario de bordo | 1d | 2026-09-02 | 2026-09-02 | 39SS |  | start no earlier than 2026-09-02 |
| 41 |  | APRESENTACAO CHECKPOINT 1 | 0d | 2026-09-03 | 2026-09-03 | 40 |  | start no earlier than 2026-09-03 |
| 42 | 1.3 | **CHECKPOINT 2 - Modelagem e Prototipacao** | 56d | 2026-09-04 | 2026-09-18 |  |  |  |
| 43 |  | Setup do projeto Laravel no monorepo | 4d | 2026-09-04 | 2026-09-06 | 41 |  | start no earlier than 2026-09-04 |
| 44 |  | Configuracao do PostgreSQL local (Docker) | 2.5d | 2026-09-04 | 2026-09-05 | 41 |  | start no earlier than 2026-09-04 |
| 45 |  | Setup do projeto Flutter no monorepo | 4d | 2026-09-05 | 2026-09-07 | 41FS+1d |  | start no earlier than 2026-09-05 |
| 46 |  | 4.2 Consolidacao dos requisitos finais | 4.5d | 2026-09-06 | 2026-09-09 | 41FS+2.5d |  | start no earlier than 2026-09-06 |
| 47 |  | 4.5 Prototipacao de telas no Figma - fluxos do cliente | 6.5d | 2026-09-07 | 2026-09-12 | 46SS+1.5d |  | start no earlier than 2026-09-07 |
| 48 |  | 4.5 Prototipacao de telas no Figma - area administrativa | 4.5d | 2026-09-13 | 2026-09-16 | 47 |  | start no earlier than 2026-09-13 |
| 49 |  | 4.6 Documentos detalhados dos casos de uso | 5.5d | 2026-09-08 | 2026-09-12 | 46SS+2.5d |  | start no earlier than 2026-09-08 |
| 50 |  | 4.7 Diagrama de dados (DER) | 4.5d | 2026-09-09 | 2026-09-12 | 44FS+3.5d |  | start no earlier than 2026-09-09 |
| 51 |  | 4.8 Diagrama de classes do modelo de dados | 4d | 2026-09-15 | 2026-09-18 | 50FS+2.5d |  | start no earlier than 2026-09-15 |
| 52 |  | Migrations iniciais - usuarios, clientes, contas | 5d | 2026-09-11 | 2026-09-14 | 50SS+2d |  | start no earlier than 2026-09-11 |
| 53 |  | Implementacao da autenticacao (Laravel Sanctum) | 4.5d | 2026-09-13 | 2026-09-16 | 52SS+2.5d |  | start no earlier than 2026-09-13 |
| 54 |  | Layout base em Blade + Tailwind CSS | 4.5d | 2026-09-13 | 2026-09-16 | 48SS |  | start no earlier than 2026-09-13 |
| 55 |  | Atualizacao do LibreProject | 1d | 2026-09-15 | 2026-09-15 | 51SS |  | start no earlier than 2026-09-15 |
| 56 |  | Consolidacao do PDF unico do checkpoint 2 | 1d | 2026-09-16 | 2026-09-16 | 55 |  | start no earlier than 2026-09-16 |
| 57 |  | APRESENTACAO CHECKPOINT 2 | 0d | 2026-09-17 | 2026-09-17 | 56 |  | start no earlier than 2026-09-17 |
| 58 | 1.4 | **CHECKPOINT 3 - Backend REST com TDD** | 68d | 2026-09-18 | 2026-10-23 |  |  |  |
| 59 |  | Definicao da estrategia de testes (TDD) | 4d | 2026-09-18 | 2026-09-20 | 57 |  | start no earlier than 2026-09-18 |
| 60 |  | Motor transacional - partidas dobradas (TDD) | 11d | 2026-09-21 | 2026-09-30 | 59 |  | start no earlier than 2026-09-21 |
| 61 |  | API REST - contas, saldo e extrato (TDD) | 9d | 2026-10-01 | 2026-10-08 | 60 |  | start no earlier than 2026-10-01 |
| 62 |  | API REST - chaves Pix e transferencias (TDD) | 9d | 2026-10-09 | 2026-10-16 | 61 |  | start no earlier than 2026-10-09 |
| 63 |  | API REST - pagamentos, boletos e QR Code (TDD) | 8d | 2026-10-17 | 2026-10-23 | 61FS+9d |  | start no earlier than 2026-10-17 |
| 64 |  | Motor antifraude por regras de risco | 4.5d | 2026-10-14 | 2026-10-17 | 62SS+6d |  | start no earlier than 2026-10-14 |
| 65 |  | Trilha de auditoria imutavel | 3.5d | 2026-10-15 | 2026-10-17 | 63SS |  | start no earlier than 2026-10-15 |
| 66 |  | Documentacao da API em OpenAPI/Swagger | 4d | 2026-10-17 | 2026-10-19 | 64SS+3d |  | start no earlier than 2026-10-17 |
| 67 |  | Deploy do backend no Render | 3.5d | 2026-10-18 | 2026-10-20 | 65 |  | start no earlier than 2026-10-18 |
| 68 |  | Provisionamento do PostgreSQL no Render | 2.5d | 2026-10-18 | 2026-10-19 | 65 |  | start no earlier than 2026-10-18 |
| 69 |  | 4.9 Diagramas de classes das interacoes | 5d | 2026-10-17 | 2026-10-20 | 64SS+3d |  | start no earlier than 2026-10-17 |
| 70 |  | Testes de integracao da API publicada | 2d | 2026-10-20 | 2026-10-21 | 67SS+2.5d |  | start no earlier than 2026-10-20 |

| ID | WBS | Task | Duration | Start | Finish | Predecessors | Constraint |
| --- | --- | --- | --- | --- | --- | --- | --- |
| 71 |  | Atualizacao do LibreProject | 1d | 2026-10-20 | 2026-10-20 | 69SS+4d | start no earlier than 2026-10-20 |
| 72 |  | Consolidacao do PDF unico do checkpoint 3 | 1d | 2026-10-21 | 2026-10-21 | 71 | start no earlier than 2026-10-21 |
| 73 |  | APRESENTACAO CHECKPOINT 3 | 0d | 2026-10-22 | 2026-10-22 | 72 | start no earlier than 2026-10-22 |
| 74 | 1.5 | **CHECKPOINT 4 - Frontend Web, Mobile e Entrega Final** | 129.5d | 2026-10-23 | 2026-12-03 |  |  |
| 75 |  | Portal do cliente web - autenticacao e dashboard | 9d | 2026-10-23 | 2026-10-30 | 73 | start no earlier than 2026-10-23 |
| 76 |  | Portal do cliente web - extrato e transferencias | 9.5d | 2026-10-31 | 2026-11-07 | 75 | start no earlier than 2026-10-31 |
| 77 |  | Portal do cliente web - cartoes e pagamentos | 8d | 2026-11-08 | 2026-11-14 | 76 | start no earlier than 2026-11-08 |
| 78 |  | Portal administrativo web - usuarios e perfis | 6.5d | 2026-11-15 | 2026-11-20 | 77 | start no earlier than 2026-11-15 |
| 79 |  | Portal administrativo web - auditoria e relatorios | 6d | 2026-11-21 | 2026-11-25 | 78 | start no earlier than 2026-11-21 |
| 80 |  | App Flutter - login e autenticacao com a API | 9d | 2026-10-23 | 2026-10-30 | 73 | start no earlier than 2026-10-23 |
| 81 |  | App Flutter - dashboard, saldo e extrato | 11d | 2026-10-31 | 2026-11-08 | 80 | start no earlier than 2026-10-31 |
| 82 |  | App Flutter - transferencias Pix | 9d | 2026-11-09 | 2026-11-16 | 81 | start no earlier than 2026-11-09 |
| 83 |  | App Flutter - cartoes e pagamentos | 9d | 2026-11-17 | 2026-11-24 | 82 | start no earlier than 2026-11-17 |
| 84 |  | Modulo de cartoes e faturas no backend | 11.5d | 2026-11-01 | 2026-11-10 | 73FS+10.5d | start no earlier than 2026-11-01 |
| 85 |  | Modulo de suporte e chamados | 7d | 2026-11-11 | 2026-11-16 | 84 | start no earlier than 2026-11-11 |
| 86 |  | Relatorios gerenciais | 5.5d | 2026-11-17 | 2026-11-21 | 85 | start no earlier than 2026-11-17 |
| 87 |  | Testes de integracao ponta a ponta | 6.5d | 2026-11-22 | 2026-11-27 | 83SS+5.5d | start no earlier than 2026-11-22 |
| 88 |  | Correcao de defeitos identificados | 6d | 2026-11-26 | 2026-11-30 | 87SS+4.5d | start no earlier than 2026-11-26 |
| 89 |  | 5.3 Elaboracao do manual do usuario | 9d | 2026-11-20 | 2026-11-27 | 83SS+3d | start no earlier than 2026-11-20 |
| 90 |  | Build do APK e disponibilizacao para download | 2d | 2026-11-30 | 2026-12-01 | 88SS+5d | start no earlier than 2026-11-30 |
| 91 |  | Deploy final e testes em producao | 2d | 2026-12-01 | 2026-12-02 | 88 | start no earlier than 2026-12-01 |
| 92 |  | 5.4 Atualizacao final do LibreProject | 1d | 2026-12-01 | 2026-12-01 | 91SS | start no earlier than 2026-12-01 |
| 93 |  | 5.5 Commit final com todo o codigo | 1d | 2026-12-02 | 2026-12-02 | 92 | start no earlier than 2026-12-02 |
| 94 |  | Consolidacao do PDF unico final | 1d | 2026-12-02 | 2026-12-02 | 93SS | start no earlier than 2026-12-02 |
| 95 |  | APRESENTACAO CHECKPOINT 4 - ENTREGA FINAL | 0d | 2026-12-03 | 2026-12-03 | 94 | start no earlier than 2026-12-03 |

## Version 2 (data date 2026-08-24, saved 2026-09-29)

Note of the change: refactor: saida de integrante - redistribuicao de tarefas, correcao da stack mobile (React Native/Expo) e migracao para EduCafilista/Fluxo-Bank

Last finish stays 2026-12-03.

Changed:

| ID | Task | Other |
| --- | --- | --- |
| 9 | Estudo de arquitetura de software em camadas | resources Joao Alfredo → Gabriel Henrique |
| 10 | Estudo dirigido - Laravel e PHP 8 | resources Joao Alfredo → Eduardo Henrique |
| 11 | Estudo dirigido - React Native e Expo | was named Estudo dirigido - Flutter e Dart |
| 16 | Prova de conceito - integracao Laravel + Expo | was named Prova de conceito - integracao Laravel + Flutter; resources Joao Alfredo → Marcus Vinicius |
| 28 | Definicao das regras de negocio | resources Joao Alfredo → Gabriel Henrique |
| 43 | Setup do projeto Laravel no monorepo | resources Joao Alfredo → Eduardo Henrique |
| 45 | Setup do projeto Expo no monorepo | was named Setup do projeto Flutter no monorepo |
| 53 | Implementacao da autenticacao (Laravel Sanctum) | resources Joao Alfredo → Eduardo Henrique |
| 59 | Definicao da estrategia de testes (TDD) | resources Joao Alfredo → Gabriel Henrique |
| 60 | Motor transacional - partidas dobradas (TDD) | resources Joao Alfredo → Harttur Oliveira Pimenta |
| 61 | API REST - contas, saldo e extrato (TDD) | resources Joao Alfredo → Harttur Oliveira Pimenta |
| 62 | API REST - chaves Pix e transferencias (TDD) | resources Joao Alfredo → Marcus Vinicius |
| 69 | 4.9 Diagramas de classes das interacoes | resources Joao Alfredo → Marcus Vinicius |
| 80 | App Mobile (Expo) - login e autenticacao com a API | was named App Flutter - login e autenticacao com a API |
| 81 | App Mobile (Expo) - dashboard, saldo e extrato | was named App Flutter - dashboard, saldo e extrato |
| 82 | App Mobile (Expo) - transferencias Pix | was named App Flutter - transferencias Pix |
| 83 | App Mobile (Expo) - cartoes e pagamentos | was named App Flutter - cartoes e pagamentos |
| 84 | Modulo de cartoes e faturas no backend | resources Joao Alfredo → Harttur Oliveira Pimenta |
| 85 | Modulo de suporte e chamados | resources Joao Alfredo → Marcus Vinicius |
